# 甘特图1

Schedule from MS Project, 2016-11-01 to 2018-01-14, 3 hours a day, costs in ¥.

## Calendars

- “24 小时”的副本: Mon-Sun 19:00-21:00.

## Resources

| Resource | Rate |
| --- | --- |
| 李文杰 | 28.83 |
| 赵伟 | 28.83 |
| 陈启强 | 28.83 |
| 余泽伟 | 28.83 |

## Schedule

| ID | WBS | Task | Type | Duration | Start | Finish | Predecessors | Constraint | Resources | Work | Cost |
| --- | --- | --- | --- | --- | --- | --- | --- | --- | --- | --- | --- |
| 1 | 11 | **项目启动** |  | 15.33d | 2017-09-28 19:00 | 2017-10-20 21:00 |  |  |  | 72.35h | 2,085.85 |
| 2 | 11.1 | 团队建立 | manual | 0.67d | 2017-09-28 19:00 | 2017-09-28 21:00 |  |  | 李文杰 [50%]; 余泽伟 [50%]; 赵伟 [50%]; 陈启强 [50%] | 3.05h | 87.93 |
| 3 | 11.9 | 搜集文档模板并确定模版标准 | manual | 2d | 2017-09-29 19:00 | 2017-10-01 21:00 | 2 |  | 李文杰 [50%]; 赵伟 [50%]; 余泽伟 [50%]; 陈启强 [50%] | 12h | 345.96 |
| 4 | 11.2 | 软件安装 | manual | 3.33d | 2017-10-02 19:00 | 2017-10-06 21:00 | 3 |  | 李文杰 [20%]; 余泽伟 [20%]; 赵伟 [20%]; 陈启强 [20%] | 8h | 230.64 |
| 5 | 11.4 | 撰写《可行性研究报告》并进行初次提交 | manual | 4d | 2017-10-02 19:00 | 2017-10-07 21:00 | 3 | start no earlier than 2017-10-08 19:00 | 赵伟 | 12h | 345.96 |
| 6 | 11.14 | 撰写《项目开发设计》报告并进行初次提交 | manual | 4d | 2017-10-08 19:00 | 2017-10-13 21:00 | 2, 3, 4, 5 |  | 陈启强 | 12h | 345.96 |
| 7 | 11.5 | 修改《可行性研究报告》 | manual | 4.67d | 2017-10-08 19:00 | 2017-10-14 21:00 | 5 | start no earlier than 2017-10-13 19:00 | 余泽伟 [80%] | 11.2h | 322.9 |
| 8 | 11.13 | 修改《项目开发设计》报告 | manual | 4.67d | 2017-10-08 19:00 | 2017-10-14 21:00 |  |  | 陈启强 | 14h | 403.62 |
| 9 | 11.11 | 提交《可行性研究报告》与《项目开发设计》报告 | milestone, manual | 0.67d | 2017-10-20 19:00 | 2017-10-20 21:00 | 7 |  | 陈启强 [5%] | 0.1h | 2.88 |
| 10 | 12 | **项目规划** |  | 10d | 2017-10-20 19:00 | 2017-11-03 21:00 | 1 |  |  | 190.3h | 5,486.35 |
| 11 | 12.4 | 撰写《项目章程》 | manual | 3.33d | 2017-10-20 19:00 | 2017-10-24 21:00 |  | start no earlier than 2017-10-20 19:00 | 余泽伟 | 10h | 288.3 |
| 12 | 12.5 | 撰写《项目总体计划》 | manual | 3.33d | 2017-10-23 19:00 | 2017-10-27 21:00 |  | start no earlier than 2017-10-23 19:00 | 李文杰 [200%] | 20h | 576.6 |
| 13 | 2.3 | 撰写《需求工程计划--初步》并提交 | manual | 3.33d | 2017-10-23 19:00 | 2017-10-27 21:00 |  |  | 赵伟 | 10h | 288.3 |
| 14 | 12.53 | UML概述ppt制作 | manual | 2.67d | 2017-10-25 19:00 | 2017-10-28 21:00 |  |  | 余泽伟 | 8h | 230.64 |
| 15 | 12.54 | UML概述ppt制作 | manual | 2.67d | 2017-10-25 19:00 | 2017-10-28 21:00 |  |  | 赵伟 | 8h | 230.64 |
| 16 | 12.51 | UML概述ppt制作 | manual | 2.67d | 2017-10-25 19:00 | 2017-10-28 21:00 |  |  | 余泽伟 | 8h | 230.64 |
| 17 | 2.7 | 撰写WBS图、OBS图、gantt图 | manual | 1.33d | 2017-10-23 19:00 | 2017-10-24 21:00 |  | start no earlier than 2017-10-23 19:00 | 李文杰; 陈启强; 余泽伟 | 12h | 345.96 |
| 18 | 12.12 | 提交《项目章程》、《项目总体计划》 | milestone, manual | 0.67d | 2017-10-25 19:00 | 2017-10-25 21:00 | 12, 11 |  | 陈启强 [5%] | 0.1h | 2.88 |
| 19 | 2.9 | 撰写《QA计划》 | manual | 3.33d | 2017-10-30 19:00 | 2017-11-03 21:00 | 18 |  | 李文杰 | 10h | 288.3 |
| 20 | 2.10 | 提交《QA计划》和项目各类修改文档 | milestone, manual | 0.67d | 2017-11-03 19:00 | 2017-11-03 21:00 | 19 |  | 陈启强 [10%] | 0.2h | 5.77 |
| 21 | 12.40 | 修改《需求工程项目计划》 | manual | 4.67d | 2017-10-28 19:00 | 2017-11-03 21:00 | 13 |  | 余泽伟; 陈启强; 李文杰; 赵伟 | 56h | 1,614.48 |
| 22 | 12.55 | **修改《需求工程项目计划》** |  | 4d | 2016-11-01 19:00 | 2016-11-06 21:00 |  |  |  | 48h | 1,383.84 |
| 23 | 12.55.54 | 修改《成本管理计划》 | manual | 2d | 2016-11-01 19:00 | 2016-11-03 21:00 |  |  | 赵伟 | 6h | 172.98 |
| 24 | 12.55.55 | 修改《风险管理计划》 | manual | 2d | 2016-11-01 19:00 | 2016-11-03 21:00 |  |  | 赵伟 | 6h | 172.98 |
| 25 | 12.55.56 | 修改《范围管理计划》 | manual | 2d | 2016-11-03 19:00 | 2016-11-05 21:00 |  |  | 余泽伟 | 6h | 172.98 |
| 26 | 12.55.57 | 修改《质量管理计划》 | manual | 2d | 2016-11-03 19:00 | 2016-11-05 21:00 |  |  | 赵伟 | 6h | 172.98 |
| 27 | 12.55.58 | 修改《人力资源管理计划》 | manual | 2d | 2016-11-04 19:00 | 2016-11-06 21:00 |  |  | 陈启强; 李文杰; 余泽伟; 赵伟 | 24h | 691.92 |

| ID | WBS | Task | Type | Duration | Start | Finish | Predecessors | Constraint | Resources | Work | Cost |
| --- | --- | --- | --- | --- | --- | --- | --- | --- | --- | --- | --- |
| 28 | 13 | **项目执行** |  | 34.67d | 2017-11-05 19:00 | 2017-12-26 21:00 | 10 |  |  | 206.7h | 5,959.16 |
| 29 | 13.1 | 《需求工程项目计划》评审 | milestone, manual | 2.67d | 2017-11-06 19:00 | 2017-11-09 21:00 | 21 | start no earlier than 2017-11-06 19:00 | 李文杰; 余泽伟; 赵伟; 陈启强 | 32h | 922.56 |
| 30 | 3.2 | 修改《需求工程项目计划》 | manual | 1.33d | 2017-11-10 19:00 | 2017-11-11 21:00 | 29 |  | 李文杰 [80%] | 3.2h | 92.26 |
| 31 | 3.3 | 提交《需求工程项目计划》 | milestone, manual | 0.67d | 2017-11-12 19:00 | 2017-11-12 21:00 | 30 |  | 赵伟 [5%] | 0.1h | 2.88 |
| 32 | 13.2 | **需求分析** |  | 29.33d | 2017-11-13 19:00 | 2017-12-26 21:00 |  |  |  | 171.4h | 4,941.46 |
| 33 | 13.2.86 | **撰写《用户代表确认文档》** |  | 1.33d | 2017-11-14 19:00 | 2017-11-15 21:00 |  |  |  | 10h | 288.3 |
| 34 | 13.2.86.1 | 撰写《教师代表确认文档》 | manual | 0.67d | 2017-11-15 19:00 | 2017-11-15 21:00 |  |  | 李文杰 | 2h | 57.66 |
| 35 | 13.2.86.2 | 撰写《学生代表确认文档》 | manual | 0.67d | 2017-11-15 19:00 | 2017-11-15 21:00 |  |  | 赵伟 [200%] | 4h | 115.32 |
| 36 | 13.2.86.3 | 撰写《管理员代表确认文档》 | manual | 0.67d | 2017-11-15 19:00 | 2017-11-15 21:00 |  |  | 余泽伟 [200%] | 4h | 115.32 |
| 37 | 13.2.32 | 界面原型设计-初步 | manual | 2d | 2017-11-17 19:00 | 2017-11-19 21:00 | 33 |  | 陈启强 | 6h | 172.98 |
| 38 | 13.2.116 | **撰写用例文档** |  | 3.67d | 2017-11-17 19:00 | 2017-11-22 20:00 | 37 |  |  | 24h | 691.92 |
| 39 | 13.2.116.1 | 撰写《教师用例文档》 | manual | 2d | 2017-11-17 19:00 | 2017-11-19 21:00 |  |  | 李文杰 | 6h | 172.98 |
| 40 | 13.2.116.2 | 撰写《学生用例文档》 | manual | 2d | 2017-11-17 19:00 | 2017-11-19 21:00 |  |  | 赵伟 | 6h | 172.98 |
| 41 | 13.2.116.3 | 撰写《管理员用例文档》 | manual | 2d | 2017-11-17 19:00 | 2017-11-19 21:00 |  |  | 余泽伟 | 6h | 172.98 |
| 42 | 13.2.116.4 | 撰写《游客用例文档》 | manual | 2d | 2017-11-19 19:00 | 2017-11-21 21:00 |  |  | 陈启强 | 6h | 172.98 |
| 43 | 13.2.34 | 《前景与范围文档》修改 | manual | 0.67d | 2017-11-20 19:00 | 2017-11-20 21:00 |  |  | 陈启强 | 2h | 57.66 |
| 44 | 13.2.38 | 提交《用例与用例文档》、界面原型、《前景与范围》、《用户群分类》 | manual | 0.67d | 2017-11-20 19:00 | 2017-11-20 21:00 | 33, 37 |  | 陈启强 [5%] | 0.1h | 2.88 |
| 45 | 13.2.95 | 修改《学生用例文档》 | manual | 2d | 2017-11-22 19:00 | 2017-11-24 21:00 | 44 |  | 赵伟 [80%] | 4.8h | 138.38 |
| 46 | 13.2.87 | 第一次访谈客户代表 | manual | 0.33d | 2017-11-26 19:00 | 2017-11-26 20:00 | 44 |  | 李文杰; 赵伟; 余泽伟; 陈启强 | 4h | 115.32 |
| 47 | 13.2.94 | 第一次访谈教师代表 | manual | 0.67d | 2017-11-21 19:00 | 2017-11-21 21:00 | 44 |  | 李文杰; 赵伟; 余泽伟; 陈启强 | 8h | 230.64 |
| 48 | 3.4.9 | 修改界面原型 | manual | 1.33d | 2017-11-26 19:00 | 2017-11-27 21:00 |  |  | 陈启强 | 4h | 115.32 |
| 49 | 13.2.98 | 修改《教师用例文档》 | manual | 1.33d | 2017-11-26 19:00 | 2017-11-27 21:00 |  |  | 赵伟 [80%] | 3.2h | 92.26 |
| 50 | 13.2.96 | 修改《学生用例文档》 | manual | 2d | 2017-12-01 19:00 | 2017-12-03 21:00 | 47 |  | 赵伟 [80%] | 4.8h | 138.38 |
| 51 | 13.2.92 | 草拟需求规格说明书 | manual | 2d | 2017-12-01 19:00 | 2017-12-03 21:00 | 44 |  | 陈启强 [400%] | 24h | 691.92 |
| 52 | 13.2.121 | 撰写《数据字典》 | manual | 0.67d | 2017-12-03 19:00 | 2017-12-03 21:00 | 47 |  | 李文杰 [150%]; 赵伟 [150%]; 余泽伟 [150%]; 陈启强 [150%] | 12h | 345.96 |
| 53 | 13.2.130 | 提交《用例与用例文档》、界面原型、ER图、《需求规格说明书》 | manual | 0.67d | 2017-12-04 19:00 | 2017-12-04 21:00 | 47 |  | 陈启强 | 2h | 57.66 |
| 54 | 13.2.93 | 第二次访谈教师代表 | manual | 0.67d | 2017-12-05 19:00 | 2017-12-05 21:00 | 47 |  | 李文杰; 赵伟; 余泽伟; 陈启强 | 8h | 230.64 |
| 55 | 13.2.129 | 修改界面原型 | manual | 1.33d | 2017-12-06 19:00 | 2017-12-07 21:00 | 54 |  | 余泽伟 | 4h | 115.32 |
| 56 | 13.2.99 | 修改《教师用例文档》 | manual | 0.67d | 2017-12-05 19:00 | 2017-12-05 21:00 |  |  | 李文杰 [80%] | 1.6h | 46.13 |
| 57 | 13.2.122 | 修改数据字典 | manual | 2d | 2017-12-05 19:00 | 2017-12-07 21:00 |  |  | 李文杰 [80%]; 赵伟 [80%]; 余泽伟 [80%] | 14.4h | 415.15 |
| 58 | 13.2.124 | 撰写《软件用户手册》 | manual | 0.67d | 2017-12-07 19:00 | 2017-12-07 21:00 | 44 |  | 赵伟 | 2h | 57.66 |
| 59 | 13.2.100 | 修改《教师用例文档》 | manual | 1.33d | 2017-12-09 19:00 | 2017-12-10 21:00 | 49 |  | 李文杰 [80%] | 3.2h | 92.26 |
| 60 | 13.2.91 | 修改《学生用例文档》 | manual | 0.67d | 2017-12-10 19:00 | 2017-12-10 21:00 | 50 |  | 赵伟 [80%] | 1.6h | 46.13 |
| 61 | 13.2.109 | 修改《软件需求规格说明书》 | manual | 1.33d | 2017-12-15 19:00 | 2017-12-16 21:00 |  |  | 陈启强 [80%] | 3.2h | 92.26 |
| 62 | 13.2.90 | 修改《管理员用例文档》 | manual | 0.67d | 2017-12-16 19:00 | 2017-12-16 21:00 |  |  | 余泽伟 [80%] | 1.6h | 46.13 |
| 63 | 13.2.89 | 修改《教师用例文档》 | manual | 0.67d | 2017-12-16 19:00 | 2017-12-16 21:00 | 59 |  | 李文杰 [80%] | 1.6h | 46.13 |
| 64 | 13.2.105 | 修改《教师测试用例》 | manual | 0.67d | 2017-12-16 19:00 | 2017-12-16 21:00 |  |  | 李文杰 [80%] | 1.6h | 46.13 |
| 65 | 13.2.123 | 修改数据字典 | manual | 1.33d | 2017-12-15 19:00 | 2017-12-16 21:00 | 57 |  | 李文杰 [80%]; 陈启强 [80%] | 6.4h | 184.51 |
| 66 | 13.2.126 | 修改《软件用户手册》 | manual | 0.67d | 2017-12-18 19:00 | 2017-12-18 21:00 |  |  | 李文杰 | 2h | 57.66 |
| 67 | 3.4.28 | 提交修改《软件需求规格说明书》、对话框图、数据流图 | manual | 0.67d | 2017-12-18 19:00 | 2017-12-18 21:00 |  |  | 陈启强 [5%] | 0.1h | 2.88 |
| 68 | 13.2.113 | 修改《软件需求规格说明书》 | manual | 1.33d | 2017-12-20 19:00 | 2017-12-21 21:00 | 61 |  | 陈启强 [80%] | 3.2h | 92.26 |
| 69 | 13.2.111 | JAD会议 | manual | 0.67d | 2017-12-21 19:00 | 2017-12-21 21:00 | 51 |  | 李文杰; 赵伟; 余泽伟; 陈启强 | 8h | 230.64 |

| ID | WBS | Task | Type | Duration | Start | Finish | Predecessors | Resources | Work | Cost |
| --- | --- | --- | --- | --- | --- | --- | --- | --- | --- | --- |
| 70 | 178 | **项目控制** |  | 13.33d | 2017-12-19 19:00 | 2018-01-07 21:00 |  |  | 12h | 345.96 |
| 71 | 178.1 | **需求变更** |  | 6.67d | 2017-12-19 19:00 | 2017-12-28 21:00 |  |  | 12h | 345.96 |
| 72 | 178.1.68 | 撰写《需求变更文档》并提交 | manual | 2d | 2017-12-20 19:00 | 2017-12-22 21:00 |  | 余泽伟 | 6h | 172.98 |
| 73 | 4.1.2 | 撰写《需求变更申请报告》并提交 | manual | 2d | 2017-12-23 19:00 | 2017-12-25 21:00 |  | 李文杰 | 6h | 172.98 |
| 74 | 179 | **项目收尾** |  | 11.33d | 2017-12-29 19:00 | 2018-01-14 21:00 | 70 |  | 57.85h | 1,667.82 |
| 75 | 179.23 | 撰写《项目绩效评价》 | manual | 1d | 2017-12-29 19:00 | 2017-12-30 20:00 |  | 余泽伟 [150%] | 4.5h | 129.73 |
| 76 | 179.11 | 撰写《系统设计与实现计划》 | manual | 1d | 2018-01-10 19:00 | 2018-01-11 20:00 |  | 李文杰 [200%] | 6h | 172.98 |
| 77 | 179.24 | 撰写《软件概要设计说明》 | manual | 2.5d | 2017-10-10 19:00 | 2017-10-13 20:30 |  | 陈启强 | 7.5h | 216.22 |
| 78 | 179.4 | 撰写《测试计划》 | manual | 1.5d | 2018-01-03 19:00 | 2018-01-05 19:30 |  | 李文杰 [200%] | 9h | 259.47 |
| 79 | 179.9 | 撰写《安装部署计划》 | manual | 2.5d | 2017-12-31 19:00 | 2018-01-03 20:30 |  | 余泽伟 [150%] | 11.25h | 324.34 |
| 80 | 179.5 | 撰写《培训计划》 | manual | 2d | 2018-01-06 19:00 | 2018-01-08 21:00 |  | 李文杰 | 6h | 172.98 |
| 81 | 179.6 | 撰写《系统维护计划》 | manual | 1.5d | 2018-01-08 19:00 | 2018-01-10 19:30 |  | 赵伟 | 4.5h | 129.73 |
| 82 | 179.14 | 修改整理各类旧文档及PPT | manual | 0.5d | 2018-01-11 19:00 | 2018-01-11 20:30 |  | 赵伟; 陈启强; 李文杰; 余泽伟 | 6h | 172.98 |
| 83 | 179.18 | 撰写《项目总结报告》及PPT | manual | 0.5d | 2018-01-12 19:00 | 2018-01-12 20:30 |  | 陈启强 | 1.5h | 43.24 |
| 84 | 179.22 | 修改《项目总结报告》 | manual | 0.67d | 2018-01-13 19:00 | 2018-01-13 21:00 | 83 | 陈启强 [80%] | 1.6h | 46.13 |
| 85 | 179.25 | 评审 | milestone, manual | 0d | 2018-01-14 19:00 | 2018-01-14 19:00 |  | 陈启强; 李文杰; 余泽伟; 赵伟 |  |  |
